| TaskID | TaskName | StartDate | EndDate | Duration | Progress | info | DurationUnit | resources | Predecessor |
| --- | --- | --- | --- | --- | --- | --- | --- | --- | --- |
| 1 | CARPOOLING APLIKÁCIA | 2025-07-01T06:00:00.000Z | 2025-11-07T16:00:00.000Z | 94 | 0 | Systém spolujazdy - kompletný projekt | day |  |  |
| 2 | · 1. ANALÝZA PROJEKTU | 2025-07-01T06:00:00.000Z | 2025-07-18T15:00:00.000Z | 14 | 0 | Fáza analýzy a zberu požiadaviek | day |  |  |
| 3 | · · T01: Inicializácia projektu | 2025-07-01T06:00:00.000Z | 2025-07-03T15:00:00.000Z | 3 | 0 | Zodpovedný: TM1 - Peter Novák | day | TM1 Peter Novák (PM & Backend) 100 |  |
| 4 | · · T02: Analýza požiadaviek | 2025-07-04T06:00:00.000Z | 2025-07-14T15:00:00.000Z | 7 | 0 | Zodpovedný: TM1 - Peter Novák | day | TM1 Peter Novák (PM & Backend) 100 | 3FS |
| 5 | · · T03: Analýza existujúcich riešení | 2025-07-04T06:00:00.000Z | 2025-07-10T15:00:00.000Z | 5 | 0 | Zodpovedný: TM3 - Martin Horák | day | TM3 Martin Horák (UX/UI & Tester) 100 | 3FS |
| 6 | · · T04: Definícia funkčných požiadaviek | 2025-07-15T06:00:00.000Z | 2025-07-18T15:00:00.000Z | 4 | 0 | Zodpovedný: TM1 - Peter Novák | day | TM1 Peter Novák (PM & Backend) 100 | 4FS,5FS |
| 7 | · · T05: Definícia nefunkčných požiadaviek | 2025-07-15T06:00:00.000Z | 2025-07-17T15:00:00.000Z | 3 | 0 | Zodpovedný: TM4 - Lucia Szabo | day | TM4 Lucia Szabo (DB Admin & DevOps) 100 | 4FS |
| 8 | · · M1: MÍĽNIK - Dokončenie analýzy | 2025-07-18T15:00:00.000Z | 2025-07-18T15:00:00.000Z | 0 | 0 | MÍĽNIK: Ukončenie analytickej fázy | day | TM1 Peter Novák (PM & Backend) 100 | 6FS,7FS |
| 9 | · 2. NÁVRH SYSTÉMU | 2025-07-21T06:00:00.000Z | 2025-08-01T15:00:00.000Z | 10 | 0 | Fáza návrhu architektúry a dizajnu | day |  |  |
| 10 | · · T06: Návrh architektúry systému | 2025-07-21T06:00:00.000Z | 2025-07-28T15:00:00.000Z | 6 | 0 | Zodpovedný: TM1 - Peter Novák | day | TM1 Peter Novák (PM & Backend) 100 | 8FS |
| 11 | · · T07: Návrh databázového modelu | 2025-07-21T06:00:00.000Z | 2025-07-25T15:00:00.000Z | 5 | 0 | Zodpovedný: TM4 - Lucia Szabo | day | TM4 Lucia Szabo (DB Admin & DevOps) 100 | 8FS |
| 12 | · · T08: UX/UI dizajn a prototypy | 2025-07-21T06:00:00.000Z | 2025-08-01T15:00:00.000Z | 10 | 0 | Zodpovedný: TM3 - Martin Horák | day | TM3 Martin Horák (UX/UI & Tester) 100 | 8FS |
| 13 | · · T09: Návrh API | 2025-07-29T06:00:00.000Z | 2025-08-01T15:00:00.000Z | 4 | 0 | Zodpovedný: TM1 - Peter Novák | day | TM1 Peter Novák (PM & Backend) 100 | 10FS |
| 14 | · · T10: Návrh bezpečnostných mechanizmov | 2025-07-29T06:00:00.000Z | 2025-08-01T15:00:00.000Z | 4 | 0 | Zodpovedný: TM4 - Lucia Szabo | day | TM4 Lucia Szabo (DB Admin & DevOps) 100 | 10FS,11FS |
| 15 | · · M2: MÍĽNIK - Dokončenie návrhu | 2025-08-01T15:00:00.000Z | 2025-08-01T15:00:00.000Z | 0 | 0 | MÍĽNIK: Ukončenie návrhov fázy | day | TM3 Martin Horák (UX/UI & Tester) 100 | 12FS,13FS,14FS |
| 16 | · 3. VÝVOJ SYSTÉMU | 2025-08-04T06:00:00.000Z | 2025-10-03T15:00:00.000Z | 45 | 0 | Fáza implementácie a vývoja | day |  |  |
| 17 | · · T11: Setup vývojového prostredia | 2025-08-04T06:00:00.000Z | 2025-08-05T15:00:00.000Z | 2 | 0 | Zodpovedný: TM4 - Lucia Szabo | day | TM4 Lucia Szabo (DB Admin & DevOps) 100 | 15FS |
| 18 | · · Backend vývoj | 2025-08-06T06:00:00.000Z | 2025-09-17T15:00:00.000Z | 31 | 0 | Backend komponenty | day |  |  |
| 19 | · · · T12: Vývoj backend - Autentifikácia | 2025-08-06T06:00:00.000Z | 2025-08-14T15:00:00.000Z | 7 | 0 | Zodpovedný: TM1 - Peter Novák | day | TM1 Peter Novák (PM & Backend) 100 | 17FS |
| 20 | · · · T13: Vývoj backend - Správa jázd | 2025-08-15T06:00:00.000Z | 2025-08-28T15:00:00.000Z | 10 | 0 | Zodpovedný: TM1 - Peter Novák | day | TM1 Peter Novák (PM & Backend) 100 | 19FS |
| 21 | · · · T14: Vývoj backend - Rezervačný systém | 2025-08-29T06:00:00.000Z | 2025-09-09T15:00:00.000Z | 8 | 0 | Zodpovedný: TM1 - Peter Novák | day | TM1 Peter Novák (PM & Backend) 100 | 20FS |
| 22 | · · · T15: Vývoj backend - Hodnotenie a recenzie | 2025-09-10T06:00:00.000Z | 2025-09-17T15:00:00.000Z | 6 | 0 | Zodpovedný: TM1 - Peter Novák | day | TM1 Peter Novák (PM & Backend) 100 | 21FS |
| 23 | · · T16: Implementácia databázy a migrácie | 2025-08-06T06:00:00.000Z | 2025-08-12T15:00:00.000Z | 5 | 0 | Zodpovedný: TM4 - Lucia Szabo | day | TM4 Lucia Szabo (DB Admin & DevOps) 100 | 17FS |
| 24 | · · Frontend vývoj | 2025-08-15T06:00:00.000Z | 2025-09-25T15:00:00.000Z | 30 | 0 | Frontend komponenty | day |  |  |
| 25 | · · · T17: Vývoj frontend - Registrácia/Login | 2025-08-15T06:00:00.000Z | 2025-08-22T15:00:00.000Z | 6 | 0 | Zodpovedná: TM2 - Jana Kováčová | day | TM2 Jana Kováčová (Frontend) 100 | 19FS |
| 26 | · · · T18: Vývoj frontend - Dashboard vodiča | 2025-08-29T06:00:00.000Z | 2025-09-09T15:00:00.000Z | 8 | 0 | Zodpovedná: TM2 - Jana Kováčová | day | TM2 Jana Kováčová (Frontend) 100 | 20FS,25FS |
| 27 | · · · T19: Vývoj frontend - Dashboard pasažiera | 2025-08-29T06:00:00.000Z | 2025-09-09T15:00:00.000Z | 8 | 0 | Zodpovedná: TM2 - Jana Kováčová | day | TM2 Jana Kováčová (Frontend) 100 | 20FS,25FS |
| 28 | · · · T20: Vývoj frontend - Vyhľadávanie jázd | 2025-09-10T06:00:00.000Z | 2025-09-18T15:00:00.000Z | 7 | 0 | Zodpovedná: TM2 - Jana Kováčová | day | TM2 Jana Kováčová (Frontend) 100 | 27FS |
| 29 | · · · T21: Vývoj frontend - Systém hodnotení | 2025-09-19T06:00:00.000Z | 2025-09-25T15:00:00.000Z | 5 | 0 | Zodpovedná: TM2 - Jana Kováčová | day | TM2 Jana Kováčová (Frontend) 100 | 22FS,28FS |
| 30 | · · T22: Integrácia frontend a backend | 2025-09-26T06:00:00.000Z | 2025-10-03T15:00:00.000Z | 6 | 0 | Zodpovedná: TM2 - Jana Kováčová | day | TM2 Jana Kováčová (Frontend) 100 | 29FS |
| 31 | · · M3: MÍĽNIK - Dokončenie vývoja | 2025-10-03T15:00:00.000Z | 2025-10-03T15:00:00.000Z | 0 | 0 | MÍĽNIK: Ukončenie implementačnej fázy | day | TM1 Peter Novák (PM & Backend) 100 | 30FS,23FS |
| 32 | · 4. TESTOVANIE | 2025-10-06T06:00:00.000Z | 2025-11-07T16:00:00.000Z | 25 | 0 | Fáza testovania a finalizácie | day |  |  |
| 33 | · · T23: Unit testy - Backend | 2025-10-06T06:00:00.000Z | 2025-10-10T15:00:00.000Z | 5 | 0 | Zodpovedný: TM1 - Peter Novák | day | TM1 Peter Novák (PM & Backend) 100 | 31FS |
| 34 | · · T24: Unit testy - Frontend | 2025-10-06T06:00:00.000Z | 2025-10-09T15:00:00.000Z | 4 | 0 | Zodpovedná: TM2 - Jana Kováčová | day | TM2 Jana Kováčová (Frontend) 100 | 31FS |
| 35 | · · T25: Integračné testovanie | 2025-10-13T06:00:00.000Z | 2025-10-20T15:00:00.000Z | 6 | 0 | Zodpovedný: TM3 - Martin Horák | day | TM3 Martin Horák (UX/UI & Tester) 100 | 33FS,34FS |
| 36 | · · T26: Bezpečnostné testy a audit | 2025-10-21T06:00:00.000Z | 2025-10-27T16:00:00.000Z | 5 | 0 | Zodpovedný: TM3 - Martin Horák | day | TM3 Martin Horák (UX/UI & Tester) 100 | 35FS |
| 37 | · · T27: Testovanie výkonu a optimalizácia | 2025-10-21T06:00:00.000Z | 2025-10-24T15:00:00.000Z | 4 | 0 | Zodpovedná: TM4 - Lucia Szabo | day | TM4 Lucia Szabo (DB Admin & DevOps) 100 | 35FS |
| 38 | · · T28: Používateľské testovanie | 2025-10-28T07:00:00.000Z | 2025-11-03T16:00:00.000Z | 5 | 0 | Zodpovedný: TM3 - Martin Horák | day | TM3 Martin Horák (UX/UI & Tester) 100 | 36FS,37FS |
| 39 | · · T29: Opravy chýb a finalizácia | 2025-11-04T07:00:00.000Z | 2025-11-07T16:00:00.000Z | 4 | 0 | Zodpovedný: TM1 - Peter Novák | day | TM1 Peter Novák (PM & Backend) 100 | 38FS |
| 41 | · · M4: MÍĽNIK - Spustenie produkcie | 2025-11-07T16:00:00.000Z | 2025-11-07T16:00:00.000Z | 0 | 0 | MÍĽNIK: Projekt pripravený na ostré nasadenie | day | TM4 Lucia Szabo (DB Admin & DevOps) 100 | 39FS |

Links (from, to):
- 8 12
- 13 17
